Schedule from MS Project, 2026-02-03 to 2026-10-31, status date 2026-04-09, costs in $, A marks actual dates.

## Calendars

- ADSO: Mon-Fri 08:00-13:00, 14:00-17:00; Sat-Sun off. Exceptions (off unless hours are given): 2026-03-23 (festivo).

## Resources

| Resource | Rate |
| --- | --- |
| Analista | 28472.2 |
| Arquitecto | 27700 |
| Desarrollador | 34600 |
| Tester / QA | 17800 |
| Servidor cloud | 500 |
| sancion |  |
| pc1 | 4500000 |

## Schedule

| ID | WBS | Task | Type | Duration | Start | Finish | Predecessors | Complete | Remaining | Resources | Work | Actual work | Cost | Actual cost |
| --- | --- | --- | --- | --- | --- | --- | --- | --- | --- | --- | --- | --- | --- | --- |
| 1 | 1 | **Proyecto RoyalPets** |  | 194d | 2026-02-03 A | 2026-10-31 |  | 99% | 0d | pc1 | 680h | 680h | 24,990,628 | 23,916,765.24 |
| 2 | 1.1 | **Fase 1 - Planificacion del proyecto** |  | 10d | 2026-02-03 A | 2026-02-16 A |  | 100% |  |  | 80h | 80h | 2,265,424 | 2,265,424 |
| 3 | 1.1.1 | Definición del alcance | manual | 1d | 2026-02-03 A | 2026-02-04 A |  | 100% |  | Analista | 8h | 8h | 227,778 | 227,778 |
| 4 | 1.1.2 | Identificación de entregables. | manual | 1d | 2026-02-04 A | 2026-02-04 A | 3 | 100% |  | Analista | 8h | 8h | 227,778 | 227,778 |
| 5 | 1.1.3 | Estructuración del cronograma | manual | 1d | 2026-02-05 A | 2026-02-05 A | 4 | 100% |  | Analista | 8h | 8h | 227,778 | 227,778 |
| 6 | 1.1.4 | Asignación de roles | manual | 2d | 2026-02-06 A | 2026-02-09 A | 4 | 100% |  | Analista | 16h | 16h | 455,556 | 455,556 |
| 7 | 1.1.5 | Identificación de riesgos | manual | 1d | 2026-02-10 A | 2026-02-10 A | 3 | 100% |  | Analista | 8h | 8h | 227,778 | 227,778 |
| 8 | 1.1.6 | Plan de mitigación de riesgos | manual | 1d | 2026-02-11 A | 2026-02-11 A | 7 | 100% |  | Analista | 8h | 8h | 227,778 | 227,778 |
| 9 | 1.1.7 | Selección de metodología | manual | 1d | 2026-02-12 A | 2026-02-12 A | 3 | 100% |  | Arquitecto | 8h | 8h | 221,600 | 221,600 |
| 10 | 1.1.8 | Definición de herramientas | manual | 1d | 2026-02-13 A | 2026-02-13 A | 9 | 100% |  | Arquitecto | 8h | 8h | 221,600 | 221,600 |
| 11 | 1.1.9 | Plan de comunicación | manual | 1d | 2026-02-16 A | 2026-02-16 A | 6 | 100% |  | Analista | 8h | 8h | 227,778 | 227,778 |
| 12 | 1.2 | **Fase 2 - Análisis de requerimientos** |  | 10d | 2026-02-17 A | 2026-03-02 A |  | 100% |  |  | 80h | 80h | 2,277,780 | 2,277,780 |
| 13 | 1.2.1 | Identificación de stakeholders (Actores) | manual | 1d | 2026-02-17 A | 2026-02-17 A | 6 | 100% |  | Analista | 8h | 8h | 227,778 | 227,778 |
| 14 | 1.2.2 | Identificación de procesos actuales | manual | 1d | 2026-02-18 A | 2026-02-18 A | 13 | 100% |  | Analista | 8h | 8h | 227,778 | 227,778 |
| 15 | 1.2.3 | Definición de reglas de negocio | manual | 1d | 2026-02-19 A | 2026-02-19 A | 14 | 100% |  | Analista | 8h | 8h | 227,778 | 227,778 |
| 16 | 1.2.4 | Diseño de casos de uso | manual | 5d | 2026-02-20 A | 2026-02-26 A |  | 100% |  | Analista | 40h | 40h | 1,138,890 | 1,138,890 |
| 17 | 1.2.5 | Elaboración del documento de requisitos | manual | 1d | 2026-02-27 A | 2026-02-27 A |  | 100% |  | Analista | 8h | 8h | 227,778 | 227,778 |
| 18 | 1.2.6 | Validación de requisitos | manual | 1d | 2026-03-02 A | 2026-03-02 A | 17 | 100% |  | Analista | 8h | 8h | 227,778 | 227,778 |
| 19 | 1.3 | **Fase 3 - Diseño del sistema** |  | 15d | 2026-03-03 A | 2026-03-24 A |  | 100% |  |  | 104h | 104h | 3,113,956 | 3,113,956 |
| 20 | 1.3.1 | Diseño de arquitectura del sistema | manual | 5d | 2026-03-03 A | 2026-03-09 A | 18 | 100% |  | Arquitecto | 40h | 40h | 1,108,000 | 1,108,000 |
| 21 | 1.3.2 | Diseño de base de datos | manual | 1d | 2026-03-10 A | 2026-03-10 A | 20 | 100% |  | Desarrollador | 8h | 8h | 276,800 | 276,800 |
| 22 | 1.3.3 | Diseño de interfaces | manual | 1d | 2026-03-11 A | 2026-03-11 A | 20 | 100% |  | Desarrollador | 8h | 8h | 276,800 | 276,800 |
| 23 | 1.3.4 | Diseño del flujo de agendamiento | manual | 2d | 2026-03-16 A | 2026-03-17 A | 20 | 100% |  | Analista | 16h | 16h | 455,556 | 455,556 |
| 24 | 1.3.5 | Diseño del módulo de historial clínic | manual | 1d | 2026-03-18 A | 2026-03-18 A | 20 | 100% |  | Desarrollador | 8h | 8h | 276,800 | 276,800 |
| 25 | 1.3.6 | Diseño del módulo de reportes clínicos | manual | 1d | 2026-03-19 A | 2026-03-19 A | 20 | 100% |  | Desarrollador | 8h | 8h | 276,800 | 276,800 |
| 26 | 1.3.7 | Diseño de autenticación y roles | manual | 1d | 2026-03-20 A | 2026-03-20 A | 20 | 100% |  | Arquitecto | 8h | 8h | 221,600 | 221,600 |
| 27 | 1.3.8 | Diseño de seguridad | manual | 1d | 2026-03-24 A | 2026-03-24 A | 20 | 100% |  | Arquitecto | 8h | 8h | 221,600 | 221,600 |

| ID | WBS | Task | Type | Duration | Start | Finish | Predecessors | Complete | Resources | Work | Actual work | Cost | Actual cost |
| --- | --- | --- | --- | --- | --- | --- | --- | --- | --- | --- | --- | --- | --- |
| 28 | 1.4 | **Fase 4 - Desarrollo del sistema** |  | 21d | 2026-03-26 A | 2026-04-23 A |  | 100% |  | 184h | 184h | 6,257,000 | 6,257,000 |
| 29 | 1.4.1 | Configuración del entorno | manual | 1d | 2026-03-26 A | 2026-03-26 A | 27 | 100% | Desarrollador; Servidor cloud | 8h | 8h | 277,300 | 277,300 |
| 30 | 1.4.2 | Desarrollo módulo de autenticación | manual | 2d | 2026-03-27 A | 2026-03-30 A | 29 | 100% | Desarrollador | 16h | 16h | 553,600 | 553,600 |
| 31 | 1.4.3 | Desarrollo módulo de usuarios | manual | 2d | 2026-03-31 A | 2026-04-01 A | 30 | 100% | Desarrollador | 16h | 16h | 553,600 | 553,600 |
| 32 | 1.4.4 | Desarrollo módulo de mascota | manual | 1d | 2026-04-02 A | 2026-04-02 A | 31 | 100% | Desarrollador | 8h | 8h | 276,800 | 276,800 |
| 33 | 1.4.5 | Desarrollo módulo de agendamient | manual | 3d | 2026-04-03 A | 2026-04-07 A | 32 | 100% | Desarrollador | 24h | 24h | 830,400 | 830,400 |
| 34 | 1.4.6 | Desarrollo calendario de disponibilida | manual | 2d | 2026-04-08 A | 2026-04-09 A | 33 | 100% | Desarrollador | 16h | 16h | 553,600 | 553,600 |
| 35 | 1.4.7 | Desarrollo historial clínico | manual | 2d | 2026-04-10 A | 2026-04-13 A | 32 | 100% | Desarrollador | 16h | 16h | 553,600 | 553,600 |
| 36 | 1.4.8 | Desarrollo reportes clínico | manual | 2d | 2026-04-14 A | 2026-04-15 A | 35 | 100% | Desarrollador | 16h | 16h | 553,600 | 553,600 |
| 37 | 1.4.9 | Desarrollo panel administrativo | manual | 2d | 2026-04-16 A | 2026-04-17 A | 31 | 100% | Desarrollador | 16h | 16h | 553,600 | 553,600 |
| 38 | 1.4.10 | Integración con base de dato | manual | 2d | 2026-04-20 A | 2026-04-21 A | 30 | 100% | Desarrollador; Servidor cloud | 16h | 16h | 554,100 | 554,100 |
| 39 | 1.4.11 | Implementación de validaciones | manual | 2d | 2026-04-22 A | 2026-04-23 A | 33, 35, 38 | 100% | Arquitecto; Desarrollador | 32h | 32h | 996,800 | 996,800 |
| 40 | 1.5 | **Fase 5 - Pruebas del sistema** |  | 10d | 2026-04-27 A | 2026-05-08 A |  | 100% |  | 120h | 120h | 2,953,734 | 2,953,734 |
| 41 | 1.5.1 | Pruebas de integración | manual | 2d | 2026-04-27 A | 2026-04-28 A | 39 | 100% | Tester / QA; Desarrollador | 24h | 24h | 561,600 | 561,600 |
| 42 | 1.5.2 | Pruebas módulo de cita | manual | 1d | 2026-04-29 A | 2026-04-29 A | 41 | 100% | Tester / QA | 8h | 8h | 142,400 | 142,400 |
| 43 | 1.5.3 | Pruebas módulo de reportes | manual | 1d | 2026-04-30 A | 2026-04-30 A | 41 | 100% | Tester / QA | 8h | 8h | 142,400 | 142,400 |
| 44 | 1.5.4 | Pruebas de seguridad | manual | 1d | 2026-05-01 A | 2026-05-01 A | 36, 42 | 100% | Arquitecto; Tester / QA | 16h | 16h | 364,000 | 364,000 |
| 45 | 1.5.5 | Pruebas de usabilidad | manual | 1d | 2026-05-04 A | 2026-05-04 A | 42, 36 | 100% | Analista; Tester / QA | 16h | 16h | 370,178 | 370,178 |
| 46 | 1.5.6 | Corrección de errore | manual | 2d | 2026-05-05 A | 2026-05-06 A | 44, 45 | 100% | Desarrollador | 16h | 16h | 553,600 | 553,600 |
| 47 | 1.5.7 | Pruebas con usuarios | manual | 1d | 2026-05-07 A | 2026-05-07 A | 46 | 100% | Analista; Tester / QA | 16h | 16h | 370,178 | 370,178 |
| 48 | 1.5.8 | Validación final | manual | 1d | 2026-05-08 A | 2026-05-08 A | 47 | 100% | Analista; Arquitecto | 16h | 16h | 449,378 | 449,378 |
| 49 | 1.6 | **Fase 6 - Implementación** |  | 11d | 2026-05-11 A | 2026-05-25 A |  | 100% |  | 48h | 48h | 1,516,734 | 1,516,734 |
| 50 | 1.6.1 | Preparación entorno de producción | manual | 1d | 2026-05-11 A | 2026-05-11 A | 48 | 100% | Servidor cloud |  |  | 500 | 500 |
| 51 | 1.6.2 | Configuración del servido | manual | 2d | 2026-05-12 A | 2026-05-13 A | 50 | 100% | Servidor cloud |  |  | 500 | 500 |
| 52 | 1.6.3 | Migración de base de datos | manual | 1d | 2026-05-14 A | 2026-05-14 A | 51 | 100% | Servidor cloud |  |  | 500 | 500 |
| 53 | 1.6.4 | Despliegue del sistema | manual | 2d | 2026-05-15 A | 2026-05-18 A | 52 | 100% | Desarrollador; Servidor cloud | 16h | 16h | 554,100 | 554,100 |
| 54 | 1.6.5 | Configuración de dominio | manual | 1d | 2026-05-19 A | 2026-05-19 A | 53 | 100% | Servidor cloud |  |  | 500 | 500 |
| 55 | 1.6.6 | Capacitación al personal | manual | 2d | 2026-05-20 A | 2026-05-21 A | 54 | 100% | Analista | 16h | 16h | 455,556 | 455,556 |
| 56 | 1.6.7 | Entrega de manual de usuario | manual | 1d | 2026-05-22 A | 2026-05-22 A | 55 | 100% | Analista | 8h | 8h | 227,778 | 227,778 |
| 57 | 1.6.8 | Puesta en marcha | manual | 1d | 2026-05-25 A | 2026-05-25 A | 56 | 100% | Desarrollador; Servidor cloud | 8h | 8h | 277,300 | 277,300 |

| ID | WBS | Task | Type | Duration | Start | Finish | Predecessors | Complete | Resources | Work | Actual work | Cost | Actual cost |
| --- | --- | --- | --- | --- | --- | --- | --- | --- | --- | --- | --- | --- | --- |
| 58 | 1.7 | **Fase 7 - Mantenimiento** |  | 12d | 2026-05-26 A | 2026-06-10 A |  | 100% |  | 64h | 64h | 2,106,000 | 2,106,000 |
| 59 | 1.7.1 | Soporte técnico | manual | 1d | 2026-05-26 A | 2026-05-26 A | 57 | 100% | Desarrollador | 8h | 8h | 276,800 | 276,800 |
| 60 | 1.7.2 | Corrección de errores post-implementación | manual | 1d | 2026-05-27 A | 2026-05-27 A | 57, 59 | 100% | Desarrollador | 8h | 8h | 276,800 | 276,800 |
| 61 | 1.7.3 | Actualizaciones del sistema | manual | 1d | 2026-05-28 A | 2026-05-28 A | 59, 60 | 100% | Desarrollador | 8h | 8h | 276,800 | 276,800 |
| 62 | 1.7.4 | Optimización de rendimiento | manual | 2d | 2026-05-29 A | 2026-06-01 A | 61 | 100% | Arquitecto | 16h | 16h | 443,200 | 443,200 |
| 63 | 1.7.5 | Respaldo de base de datos | manual | 2d | 2026-06-02 A | 2026-06-03 A | 57 | 100% | Servidor cloud [200%] |  |  | 1,000 | 1,000 |
| 64 | 1.7.6 | Monitoreo de seguridad | manual | 2d | 2026-06-04 A | 2026-06-05 A | 57 | 100% | Servidor cloud [200%] |  |  | 1,000 | 1,000 |
| 65 | 1.7.7 | Implementación de mejoras | manual | 3d | 2026-06-08 A | 2026-06-10 A | 62, 64 | 100% | Desarrollador | 24h | 24h | 830,400 | 830,400 |
